# Project - 2TIW - 9

Schedule from MS Project, 2022-12-09 to 2023-10-05, costs in €.

## Calendars

- 9 om te herzien: Mon-Fri 08:00-11:00, 12:00-15:30; Sat 09:00-12:00; Sun off. Exceptions (off unless hours are given): 2022-12-24 to 2023-01-08 (Kerstvakantie 2022-2023), 2023-02-20 to 2023-02-26 (Krokusvakantie 2023).

## Resources

| Resource | Rate |
| --- | --- |
| Willy | 80 |
| Bea | 70 |
| Anne | 80 |
| Aaron | 14 |
| Hardware |  |
| Album |  |
| Design |  |
| Licenties | 35 |
| Isabelle A | 81 |
| Outsourcing |  |

## Schedule

| ID | WBS | Task | Type | Duration | Start | Finish | Predecessors | Baseline start | Baseline finish | Baseline duration | Total slack | Free slack | Resources | Work | Cost | Baseline cost |
| --- | --- | --- | --- | --- | --- | --- | --- | --- | --- | --- | --- | --- | --- | --- | --- | --- |
| 1 | 1 | **Tien om te herzien** |  | 176.62d | 2022-12-09 | 2023-10-05 |  | 2022-12-09 | 2023-09-27 | 171.62d | 0d |  |  | 3120h | 220,145 | 210,385 |
| 2 | 1.1 | Start meeting |  | 2w | 2022-12-09 | 2023-01-09 |  | 2022-12-09 | 2023-01-09 | 2w | 0d |  | Aaron; Bea; Anne; Willy | 320h | 19,520 | 19,520 |
| 3 | 1.2 | **Artiestenfase** |  | 71.62d | 2023-01-09 | 2023-05-09 |  | 2023-01-09 | 2023-05-09 | 71.62d | 80d |  |  | 800h | 64,000 | 64,000 |
| 4 | 1.2.1 | Artiesten scouten |  | 2w | 2023-01-09 | 2023-01-24 | 2 | 2023-01-09 | 2023-01-24 | 2w | 81.62d | 0d | Anne | 80h | 6,400 | 6,400 |
| 5 | 1.2.2 | Selectie maken van artiesten |  | 6.33w | 2023-01-24 | 2023-03-22 | 4 | 2023-01-24 | 2023-03-22 | 6.33w | 80d | 0d | Anne; Willy | 480h | 38,400 | 38,400 |
| 6 | 1.2.3 | Opstellen van contracten |  | 6w | 2023-03-22 | 2023-05-09 | 5 | 2023-03-22 | 2023-05-09 | 6w | 80d | 0d | Anne | 240h | 19,200 | 19,200 |
| 7 | 1.2.4 | Einde artiestenfase | milestone | 0w | 2023-05-09 | 2023-05-09 | 6 | 2023-05-09 | 2023-05-09 | 0w | 80d | 45d |  |  |  |  |
| 8 | 1.3 | **Promofase** |  | 79.44d | 2022-12-09 | 2023-05-04 |  | 2022-12-09 | 2023-05-04 | 79.44d | 97.19d |  |  | 520h | 9,385 | 9,385 |
| 9 | 1.3.1 | Ontwikkelen van de website |  | 3w | 2023-01-09 | 2023-02-08 | 2 | 2023-01-09 | 2023-02-08 | 3w | 97.19d | 0d | Aaron; Hardware [0.1%]; Licenties [300%] | 120h | 3,785 | 3,785 |
| 10 | 1.3.2 | Promoten van de show |  | 10w | 2023-02-08 | 2023-05-04 | 9 | 2023-02-08 | 2023-05-04 | 10w | 97.19d |  | Aaron | 400h | 5,600 | 5,600 |
| 11 | 1.3.3 | Verkopen van de tickets |  | 9w | 2023-02-16 | 2023-05-04 | 9FS+1w | 2023-02-16 | 2023-05-04 | 9w | 97.19d |  |  |  |  |  |
| 12 | 1.3.4 | Einde promofase | milestone | 0w | 2022-12-09 | 2022-12-09 |  | 2022-12-09 | 2022-12-09 | 0w | 161.62d | 126.62d |  |  |  |  |
| 13 | 1.4 | **Muziek fase** |  | 116.62d | 2023-01-09 | 2023-07-18 |  | 2023-01-09 | 2023-07-18 | 116.62d | 0d |  |  | 1080h | 91,320 | 91,320 |
| 14 | 1.4.1 | Schrijven van een hit |  | 4.03w | 2023-01-09 | 2023-02-11 | 2 | 2023-01-09 | 2023-02-11 | 4.03w | 0d |  | Anne; Willy | 320h | 25,600 | 25,600 |
| 15 | 1.4.2 | Opname van de CD |  | 13w | 2023-02-11 | 2023-06-01 | 14 | 2023-02-11 | 2023-06-01 | 13w | 0d |  | Album [0.1%]; Isabelle A | 520h | 48,120 | 48,120 |
| 16 | 1.4.3 | Design van het album |  | 6w | 2023-06-01 | 2023-07-18 | 15 | 2023-06-01 | 2023-07-18 | 6w | 0d |  | Bea; Design [0.1%] | 240h | 17,600 | 17,600 |
| 17 | 1.4.4 | Einde muziekfase | milestone | 0w | 2023-07-18 | 2023-07-18 | 16 | 2023-07-18 | 2023-07-18 | 0w | 35d | 0d |  |  |  |  |
| 18 | 1.5 | Verkoop van het album |  | 8w | 2023-07-18 | 2023-09-19 | 9, 16 | 2023-07-18 | 2023-09-19 | 8w | 0d |  |  |  |  |  |
| 19 | 1.6 | Opbouwen van het podium |  | 3w | 2023-01-09 | 2023-02-01 | 2 | 2023-01-09 | 2023-02-01 | 3w | 136.62d | 101.62d | Outsourcing [0.1%] |  | 10,000 | 10,000 |
| 20 | 1.7 | TienOmTeHerzien |  | 1w | 2023-07-18 | 2023-07-26 | 7, 12, 17, 19 | 2023-07-18 | 2023-07-26 | 1w | 35d |  | Anne; Willy | 80h | 6,400 | 6,400 |
| 21 | 1.8 | Reflectie TOTZ |  | 2w | 2023-09-20 | 2023-10-05 | 18, 20 | 2023-09-20 | 2023-09-27 | 1w | 0d |  | Aaron; Anne; Bea; Willy | 320h | 19,520 | 9,760 |
| 22 | 2 | Einde Project | milestone | 0w | 2022-12-09 | 2022-12-09 |  | 2022-12-09 | 2022-12-09 | 0w | 176.62d |  |  |  |  |  |

Notes:
- 11: Deze taak is voor Aaron. Hij zal deze taak simultaan opvolgen tijdens het promoten van de show
- 22: o Basislijn: Aantal uren werk: 2960 & totale duur: 34.33 weken. / o Huidige: Aantal uren werk: 3120 & totale duur: 35.33 weken.
